# SWGH-RCA

Schedule from MS Project, 2015-05-05 to 2015-08-26, costs in $, A marks actual dates.

## Calendars

- Estándar: Mon-Fri 14:00-18:00, 19:00-23:00; Sat 08:00-12:00, 14:00-18:00; Sun off.

## Resources

| Resource | Group | Rate | Cost per use |
| --- | --- | --- | --- |
| Administrador | Equipo de trabajo | 1.59 |  |
| Analista | Equipo de trabajo | 1.59 |  |
| Programador 1 | Equipo de trabajo | 1.59 |  |
| Programador 2 | Equipo de trabajo | 1.59 |  |
| Equipo de Computo |  |  | 0.9 |
| Impresiones |  |  | 0.5 |
| Transporte |  |  | 0.25 |
| Alimentos |  |  | 2.5 |
| Equipo de Oficina |  |  | 0.3 |

## Schedule

| ID | WBS | Task | Type | Duration | Start | Finish | Predecessors | Complete | Remaining | Actual start | Total slack | Free slack | Constraint | Resources | Work | Actual work | Cost | Actual cost |
| --- | --- | --- | --- | --- | --- | --- | --- | --- | --- | --- | --- | --- | --- | --- | --- | --- | --- | --- |
| 1 | 1 | **SWGH-RCA** |  | 98d | 2015-05-05 09:00 A | 2015-08-26 17:00 |  | 98% | 1.71d |  |  |  |  |  | 2736.38h | 2478.85h | 3,214.03 | 2,819.99 |
| 2 | 1.1 | **Inicio** |  | 98d | 2015-05-05 09:00 A | 2015-08-26 17:00 |  | 98% | 1.71d |  |  |  |  |  | 2736.38h | 2478.85h | 3,214.03 | 2,819.99 |
| 3 | 1.1.1 | **INICIACION** |  | 7d | 2015-05-05 09:00 A | 2015-05-12 23:00 |  | 99% | 0.06d |  | 90.38d | 0d |  | Analista; Programador 2; Alimentos [50%]; Equipo de Computo; Equipo de Oficina [50%]; Impresiones [50%]; Administrador; Programador 1; Transporte [50%] | 513.25h | 498.94h | 519.77 | 499.01 |
| 4 | 1.1.1.1 | **Gestion de Integracion** |  | 3d | 2015-05-05 09:00 A | 2015-05-07 17:00 |  | 99% | 0.02d |  |  |  |  | Analista | 71.25h | 60.78h | 96.84 | 79.72 |
| 5 | 1.1.1.1.1 | Busqueda de la empresa | manual | 4h | 2015-05-05 09:00 A | 2015-05-05 16:00 A |  | 100% |  |  |  |  |  | Transporte [50%]; Alimentos [50%] | 2h | 2h | 1.38 | 1.38 |
| 6 | 1.1.1.1.2 | Reunion con el patrocinador |  | 4h | 2015-05-05 14:00 A | 2015-05-05 20:33 A | 5 | 100% |  |  |  |  |  | Administrador; Analista; Programador 1; Programador 2; Transporte [50%] | 18h | 18h | 25.57 | 25.57 |
| 7 | 1.1.1.1.3 | Reunion con el gerente de la empresa |  | 4h | 2015-05-05 16:00 A | 2015-05-06 15:06 A | 6 | 100% |  |  |  |  |  | Administrador; Analista; Programador 1; Programador 2; Transporte [50%] | 18h | 18h | 25.57 | 25.57 |
| 8 | 1.1.1.1.4 | Recopilar informacion |  | 2h | 2015-05-05 19:00 A | 2015-05-06 15:46 A | 7 | 100% |  |  |  |  |  | Analista; Transporte [50%] | 3h | 3h | 3.31 | 3.31 |
| 9 | 1.1.1.1.5 | Enunciado del Trabajo del proyecto | manual | 2h | 2015-05-05 21:00 A | 2015-05-05 23:00 A | 8 | 100% |  |  |  |  |  | Equipo de Computo | 2h | 2h | 0.9 | 0.9 |
| 10 | 1.1.1.1.6 | Acta de Constitucion |  | 6h | 2015-05-06 14:00 A | 2015-05-06 21:00 | 9 | 97% | 0.17h |  | 95.62d |  | finish no earlier than 2015-05-06 19:00 | Alimentos [33.3%]; Transporte [33.3%]; Equipo de Computo; Equipo de Oficina [50%] | 4.25h | 3.89h | 1.97 | 0.92 |
| 11 | 1.1.1.2 | **Gestion de Interesados** |  | 4h | 2015-05-07 09:00 A | 2015-05-07 13:00 A | 4 | 100% |  |  |  |  |  | Administrador | 8h | 8h | 12.72 | 12.72 |
| 12 | 1.1.1.2.1 | Registro de Interesados | manual | 4h | 2015-05-07 09:00 A | 2015-05-07 13:00 A |  | 100% |  |  |  |  |  | Administrador | 4h | 4h | 6.36 | 6.36 |
| 13 | 1.1.1.3 | **Metodologia UWE** |  | 4d | 2015-05-08 14:00 A | 2015-05-12 23:00 | 11 | 99% | 0.04d |  | 0d |  |  | Programador 2 | 42h | 41.58h | 51.38 | 50.84 |
| 14 | 1.1.1.3.1 | Caso de Uso |  | 1d | 2015-05-08 14:00 A | 2015-05-08 23:00 A |  | 100% |  |  |  |  | start no earlier than 2015-05-08 09:00 | Impresiones [50%] | 4h | 4h | 0.25 | 0.25 |
| 15 | 1.1.1.3.2 | Caso de Uso Especificos |  | 1d | 2015-05-09 08:00 A | 2015-05-09 18:00 A | 14 | 100% |  |  |  |  | start no earlier than 2015-05-08 09:00 | Impresiones [25%] | 2h | 2h | 0.12 | 0.12 |
| 16 | 1.1.1.3.3 | Diagrama de Actividades |  | 2d | 2015-05-11 14:00 A | 2015-05-12 23:00 | 15 | 98% | 0.04d |  | 0d |  | finish no earlier than 2015-05-09 19:00 | Impresiones [25%] | 4h | 3.92h | 0.12 | 0.12 |
| 17 | 1.1.2 | Fin Fase | milestone, manual | 0d | 2015-05-13 14:00 | 2015-05-13 14:00 | 16 |  |  |  |  |  |  | Equipo de Computo |  |  | 0.9 |  |
| 18 | 1.1.3 | **PLANIFICACION** |  | 36d | 2015-05-13 09:00 A | 2015-06-23 17:00 | 3 | 99% | 0.29d |  |  |  |  |  | 591.93h | 450.78h | 629.94 | 408.4 |
| 19 | 1.1.3.1 | **Gestion de Integracion** |  | 1d | 2015-05-13 14:00 | 2015-05-13 23:00 |  | 99% | 0d | 2015-05-13 09:00 |  |  |  | Alimentos [50%]; Transporte [50%] | 18.35h | 17.35h | 17.83 | 17.83 |
| 20 | 1.1.3.1.1 | Plan para la direccion de proyecto |  | 8h | 2015-05-13 09:00 A | 2015-05-13 23:00 A |  | 100% |  |  |  |  |  | Analista [135%] | 10.35h | 10.35h | 16.46 | 16.46 |
| 21 | 1.1.3.2 | **Gestion del Alcance** |  | 33h | 2015-05-14 09:00 A | 2015-05-18 18:00 A | 19 | 100% |  |  |  |  |  | Administrador; Equipo de Computo; Equipo de Oficina [50%] | 106.58h | 106.58h | 79.53 | 79.53 |
| 22 | 1.1.3.2.1 | Plan de Gestion del Alcance | manual | 4h | 2015-05-14 09:00 A | 2015-05-14 13:00 A |  | 100% |  |  |  |  |  | Equipo de Oficina [50%] | 2h | 2h | 0.15 | 0.15 |
| 23 | 1.1.3.2.2 | Plan de Gestion de Requisitos | manual | 2h | 2015-05-14 14:00 A | 2015-05-14 16:00 A | 22 | 100% |  |  |  |  |  | Analista | 2h | 2h | 3.18 | 3.18 |
| 24 | 1.1.3.2.3 | Documentacion de requisitos | manual | 4h | 2015-05-14 16:00 A | 2015-05-14 21:00 A | 23 | 100% |  |  |  |  |  | Analista; Equipo de Computo | 4.04h | 4.04h | 7.26 | 7.26 |
| 25 | 1.1.3.2.4 | Matriz de trazabilidad de requisitos |  | 4h | 2015-05-14 21:00 A | 2015-05-15 14:12 A | 24 | 100% |  |  |  |  |  | Analista; Equipo de Computo | 4h | 4h | 6.36 | 6.36 |
| 26 | 1.1.3.2.5 | Enunciado del Alcance | manual | 4h | 2015-05-15 14:00 A | 2015-05-15 18:00 A | 25 | 100% |  |  |  |  |  | Administrador; Equipo de Computo | 4.04h | 4.04h | 7.26 | 7.26 |
| 27 | 1.1.3.2.6 | Linea Base del Alcance | manual | 4h | 2015-05-15 19:00 A | 2015-05-15 23:00 A | 26 | 100% |  |  |  |  |  | Equipo de Computo | 4h | 4h | 0.9 | 0.9 |
| 28 | 1.1.3.2.7 | Estructura de Desglose de Trabajo | manual | 4h | 2015-05-16 08:00 A | 2015-05-16 12:00 A | 27 | 100% |  |  |  |  |  | Equipo de Computo | 4h | 4h | 0.9 | 0.9 |

| ID | WBS | Task | Type | Duration | Start | Finish | Predecessors | Complete | Remaining | Total slack | Free slack | Constraint | Resources | Work | Actual work | Cost | Actual cost |
| --- | --- | --- | --- | --- | --- | --- | --- | --- | --- | --- | --- | --- | --- | --- | --- | --- | --- |
| 29 | 1.1.3.3 | **Gestion de Tiempo** |  | 18h | 2015-05-19 09:00 A | 2015-05-20 20:00 | 21 | 99% | 0.2h |  |  |  | Analista | 40h | 36.8h | 52.2 | 47.27 |
| 30 | 1.1.3.3.1 | Plan Gestion del Cronograma | manual | 2h | 2015-05-19 09:00 A | 2015-05-19 11:00 A |  | 100% |  |  |  |  | Administrador; Programador 2 | 4h | 4h | 6.36 | 6.36 |
| 31 | 1.1.3.3.2 | Matriz de asignacion de Responsables | manual | 2h | 2015-05-19 14:00 A | 2015-05-19 16:00 A | 30 | 100% |  |  |  |  | Analista; Equipo de Computo | 4h | 4h | 4.08 | 4.08 |
| 32 | 1.1.3.3.3 | Identificacion y Secuenciamiento de Actividades | manual | 2h | 2015-05-19 14:00 A | 2015-05-19 16:00 | 30 | 95% | 0.1h |  |  |  | Analista | 2h | 1.9h | 3.18 | 3.02 |
| 33 | 1.1.3.3.4 | Diagramas de red del cronograma |  | 2h | 2015-05-19 09:00 A | 2015-05-19 16:00 A | 32 | 100% |  |  |  | start no earlier than 2015-05-20 09:00 | Equipo de Computo | 2h | 2h | 0.9 | 0.9 |
| 34 | 1.1.3.3.5 | Estimacion de Recursos y Duracion de Actividades |  | 2h | 2015-05-20 17:00 A | 2015-05-20 20:00 A | 33 | 100% |  |  |  |  | Equipo de Computo | 2h | 2h | 0.9 | 0.9 |
| 35 | 1.1.3.3.6 | Cronograma del Proyecto |  | 4h | 2015-05-20 09:00 A | 2015-05-20 18:00 A | 34 | 100% |  |  |  | start no earlier than 2015-05-21 09:00 | Analista | 4h | 4h | 6.36 | 6.36 |
| 36 | 1.1.3.3.7 | Lista de Hitos |  | 2h | 2015-05-20 09:00 A | 2015-05-20 19:06 | 35 | 95% | 0.1h | 0.11d |  |  | Equipo de Computo | 2h | 1.9h | 0.9 | 0.9 |
| 37 | 1.1.3.3.8 | Estructura de desglose de Recursos |  | 2h | 2015-05-20 09:00 A | 2015-05-20 16:00 A | 36 | 100% |  |  |  |  | Equipo de Computo | 2h | 2h | 0.9 | 0.9 |
| 38 | 1.1.3.4 | **Gestion Costo** |  | 27h | 2015-05-23 09:00 A | 2015-05-27 19:00 | 29 | 99% | 0h |  |  |  | Analista; Programador 2 | 78h | 62h | 112.2 | 86.76 |
| 39 | 1.1.3.4.1 | Plan de Gestion de Costo | manual | 4h | 2015-05-23 09:00 A | 2015-05-23 15:00 A |  | 100% |  |  |  |  | Administrador | 4h | 4h | 6.36 | 6.36 |
| 40 | 1.1.3.4.2 | Estimacion de Costos |  | 8h | 2015-05-25 14:00 A | 2015-05-25 23:00 A | 39 | 100% |  |  |  | start no earlier than 2015-05-25 09:00 | Administrador | 8h | 8h | 12.72 | 12.72 |
| 41 | 1.1.3.4.3 | Presupuesto del Proyecto | manual | 4h | 2015-05-26 14:00 A | 2015-05-26 18:00 A | 40 | 100% |  |  |  |  | Administrador | 4h | 4h | 6.36 | 6.36 |
| 42 | 1.1.3.4.4 | Linea Base de Costos |  | 8h | 2015-05-26 19:00 A | 2015-05-27 18:00 A | 41 | 100% |  |  |  |  | Equipo de Computo | 8h | 8h | 0.9 | 0.9 |
| 43 | 1.1.3.5 | **Gestion Calidad** |  | 25h | 2015-05-28 09:00 A | 2015-05-30 12:00 | 38 | 99% | 0.2h |  |  |  | Administrador | 61h | 55.68h | 60.53 | 52.45 |
| 44 | 1.1.3.5.1 | Plan Gestion de Calidad | manual | 4h | 2015-05-28 09:00 A | 2015-05-28 13:00 |  | 99% | 0.04h |  |  |  | Administrador | 4h | 3.96h | 6.36 | 6.3 |
| 45 | 1.1.3.5.2 | Metricas de Calidad |  | 4h | 2015-05-28 14:00 A | 2015-05-28 18:00 A | 44 | 100% |  |  |  |  | Administrador | 4h | 4h | 6.36 | 6.36 |
| 46 | 1.1.3.5.3 | Linea Base de Calidad |  | 4h | 2015-05-29 14:00 A | 2015-05-29 18:00 | 45 | 99% | 0.04h | 0.99d | 0d | start no earlier than 2015-05-29 09:00 | Administrador | 4h | 3.96h | 6.36 | 6.3 |
| 47 | 1.1.3.5.4 | Matriz de Actividades de Calidad |  | 8h | 2015-05-29 19:00 A | 2015-05-30 12:00 | 46 | 99% | 0.08h | 74.88d |  | finish no earlier than 2015-05-27 19:00 | Equipo de Computo; Equipo de Oficina; Impresiones | 24h | 23.76h | 1.7 | 1.7 |
| 48 | 1.1.3.6 | **Gestion de RRHH** |  | 3d | 2015-06-01 09:00 A | 2015-06-03 23:00 | 43 | 99% | 0d | 0d |  |  | Analista | 47h | 23h | 43.56 | 5.4 |
| 49 | 1.1.3.6.1 | Matriz de Asignacion de Responsables |  | 4h | 2015-06-01 09:00 A | 2015-06-01 18:00 A |  | 100% |  |  |  |  | Equipo de Computo | 4h | 4h | 0.9 | 0.9 |
| 50 | 1.1.3.6.2 | Organigrama del Proyecto | manual | 4h | 2015-06-01 14:00 A | 2015-06-01 18:00 A | 49 | 100% |  |  |  |  | Equipo de Computo | 4h | 4h | 0.9 | 0.9 |
| 51 | 1.1.3.6.3 | Descripcion de Roles |  | 4h | 2015-06-02 14:00 A | 2015-06-02 18:00 A | 50 | 100% |  |  |  | start no earlier than 2015-06-02 09:00 | Equipo de Computo | 4h | 4h | 0.9 | 0.9 |
| 52 | 1.1.3.6.4 | Adquisicion del personal | manual | 3h | 2015-06-02 19:00 A | 2015-06-02 22:00 A | 51 | 100% |  |  |  |  | Equipo de Computo | 3h | 3h | 0.9 | 0.9 |
| 53 | 1.1.3.6.5 | Diagrama de Carga Personal |  | 4h | 2015-06-03 14:00 A | 2015-06-03 18:00 A | 52 | 100% |  |  |  | start no earlier than 2015-06-03 09:00 | Equipo de Computo | 4h | 4h | 0.9 | 0.9 |
| 54 | 1.1.3.6.6 | Plan de RRHH |  | 4h | 2015-06-03 19:00 A | 2015-06-03 23:00 A | 53 | 100% |  |  |  | start no earlier than 2015-06-03 09:00 | Equipo de Computo | 4h | 4h | 0.9 | 0.9 |

| ID | WBS | Task | Type | Duration | Start | Finish | Predecessors | Complete | Remaining | Actual start | Total slack | Free slack | Constraint | Resources | Work | Actual work | Cost | Actual cost |
| --- | --- | --- | --- | --- | --- | --- | --- | --- | --- | --- | --- | --- | --- | --- | --- | --- | --- | --- |
| 55 | 1.1.3.7 | **Gestion de Comunicación** |  | 17h | 2015-06-05 09:00 A | 2015-06-06 12:00 | 48 | 98% | 0.34h |  |  |  |  | Administrador | 29h | 28.42h | 35.19 | 34.65 |
| 56 | 1.1.3.7.1 | Plan de Gestion de Comunicación | manual | 4h | 2015-06-05 09:00 A | 2015-06-05 13:00 A |  | 100% |  |  |  |  |  | Administrador | 4h | 4h | 6.36 | 6.36 |
| 57 | 1.1.3.7.2 | Matriz de Comunicación del Proyecto |  | 4h | 2015-06-05 14:00 A | 2015-06-05 18:00 | 56 | 95% | 0.2h |  | 0.49d | 0d |  | Equipo de Computo | 4h | 3.8h | 0.9 | 0.9 |
| 58 | 1.1.3.7.3 | Glosario de Terminologias |  | 4h | 2015-06-05 19:00 A | 2015-06-05 23:00 | 57 | 99% | 0.04h |  | 69.38d |  | start no earlier than 2015-06-03 09:00 | Equipo de Computo | 4h | 3.96h | 0.9 | 0.9 |
| 59 | 1.1.3.8 | **Gestion de Riesgos** |  | 25h | 2015-06-08 09:00 A | 2015-06-10 18:00 | 55 | 99% | 0h |  |  |  |  | Programador 2 | 37h | 12h | 47.91 | 8.16 |
| 60 | 1.1.3.8.1 | Plan de Gestion de Riesgos | manual | 4h | 2015-06-08 09:00 A | 2015-06-08 13:00 A |  | 100% |  |  |  |  |  | Analista | 4h | 4h | 6.36 | 6.36 |
| 61 | 1.1.3.8.2 | Identificacion y Evaluacion Cualitativa de Riesgos | manual | 4h | 2015-06-08 14:00 A | 2015-06-08 18:00 A | 60 | 100% |  |  |  |  |  | Equipo de Computo | 4h | 4h | 0.9 | 0.9 |
| 62 | 1.1.3.8.3 | Plan de Respuesta a Riesgos | manual | 4h | 2015-06-08 19:00 A | 2015-06-08 23:00 A | 61 | 100% |  |  |  |  |  | Equipo de Computo | 4h | 4h | 0.9 | 0.9 |
| 63 | 1.1.3.9 | **Gestion de Adquisiciones** |  | 17h | 2015-06-11 09:00 A | 2015-06-12 18:00 | 59 | 95% | 0.85h |  |  |  |  | Administrador | 25h | 23.75h | 39.75 | 37.76 |
| 64 | 1.1.3.9.1 | Plan de Gestion de Adquisiciones | manual | 4h | 2015-06-11 09:00 A | 2015-06-11 13:00 |  | 95% | 0.2h |  |  |  |  | Administrador | 4h | 3.8h | 6.36 | 6.04 |
| 65 | 1.1.3.9.2 | Matriz de Adquisiciones del Proyecto |  | 4h | 2015-06-11 14:00 A | 2015-06-11 18:00 | 64 | 95% | 0.2h |  | 64.88d |  | finish no earlier than 2015-06-06 19:00 | Administrador | 4h | 3.8h | 6.36 | 6.04 |
| 66 | 1.1.3.10 | **Gestion de Interesados** |  | 1d | 2015-06-12 09:00 A | 2015-06-12 17:00 A | 63 | 100% |  |  |  |  |  | Administrador; Analista | 22h | 22h | 34.98 | 34.98 |
| 67 | 1.1.3.10.1 | Plan de Gestion de Interesados | manual | 6h | 2015-06-12 09:00 A | 2015-06-12 15:00 A |  | 100% |  |  |  |  |  | Administrador | 6h | 6h | 9.54 | 9.54 |
| 68 | 1.1.3.11 | **Metodologia UWE** |  | 8d | 2015-06-15 09:00 | 2015-06-23 17:00 | 66 | 99% | 0.1d | 2015-06-12 15:00 |  |  |  | Programador 2 | 128h | 63.2h | 105.36 | 3.6 |
| 69 | 1.1.3.11.1 | Modelo Entidad Relacion | manual | 2d | 2015-06-12 15:00 A | 2015-06-15 15:00 A |  | 100% |  |  |  |  |  | Equipo de Computo | 16h | 16h | 0.9 | 0.9 |
| 70 | 1.1.3.11.2 | Modelo Logico | manual | 2d | 2015-06-16 17:00 A | 2015-06-18 17:00 | 69 | 95% | 0.1d |  |  |  |  | Equipo de Computo | 16h | 15.2h | 0.9 | 0.9 |
| 71 | 1.1.3.11.3 | Modelo Fisico | manual | 2d | 2015-06-18 17:00 A | 2015-06-20 11:00 A | 70 | 100% |  |  |  |  |  | Equipo de Computo | 16h | 16h | 0.9 | 0.9 |
| 72 | 1.1.3.11.4 | Diagrama de navegacion | manual | 2d | 2015-06-20 11:00 A | 2015-06-23 17:00 A | 71 | 100% |  |  |  |  |  | Equipo de Computo | 16h | 16h | 0.9 | 0.9 |
| 73 | 1.1.3.12 | Fin Fase | milestone, manual | 0d | 2015-06-23 17:00 | 2015-06-23 17:00 | 72 |  |  |  |  |  |  | Equipo de Computo |  |  | 0.9 |  |
| 74 | 1.1.4 | **EJECUCION** |  | 7d | 2015-06-25 09:00 A | 2015-07-02 17:00 | 18 | 99% | 0d |  |  |  |  | Administrador | 189h | 126h | 198.06 | 97 |
| 75 | 1.1.4.1 | **Gestion de Integracion** |  | 8h | 2015-06-25 09:00 A | 2015-06-25 17:00 A |  | 100% |  |  |  |  |  | Administrador | 28h | 28h | 15.24 | 15.24 |
| 76 | 1.1.4.1.1 | Gestionar el trabajo del proyecto | manual | 8h | 2015-06-25 09:00 A | 2015-06-25 17:00 A |  | 100% |  |  |  |  |  | Alimentos [50%]; Equipo de Computo; Impresiones [50%]; Transporte [50%] | 20h | 20h | 2.52 | 2.52 |
| 77 | 1.1.4.2 | **Gestion de Calidad** |  | 3d | 2015-06-26 09:00 A | 2015-06-29 23:00 | 75 | 99% | 0d |  | 0d |  |  | Administrador | 45h | 38h | 58.98 | 47.85 |
| 78 | 1.1.4.2.1 | Aseguramiento de la calidad | manual | 8h | 2015-06-26 09:00 A | 2015-06-26 17:00 A |  | 100% |  |  |  |  |  | Analista | 8h | 8h | 12.72 | 12.72 |
| 79 | 1.1.4.2.2 | Datos de Desempeño del trabajo |  | 15h | 2015-06-27 09:00 A | 2015-06-29 23:00 A | 78 | 100% |  |  |  |  |  | Equipo de Oficina [50%] | 8h | 8h | 0.15 | 0.15 |

| ID | WBS | Task | Type | Duration | Start | Finish | Predecessors | Complete | Remaining | Total slack | Resources | Work | Actual work | Cost | Actual cost |
| --- | --- | --- | --- | --- | --- | --- | --- | --- | --- | --- | --- | --- | --- | --- | --- |
| 80 | 1.1.4.3 | **Gestion de RRHH** |  | 4h | 2015-06-29 09:00 A | 2015-06-29 13:00 A | 77 | 100% |  |  | Analista; Programador 2 | 12h | 12h | 19.08 | 19.08 |
| 81 | 1.1.4.3.1 | Asignacion del personal al trabajo | manual | 4h | 2015-06-29 09:00 A | 2015-06-29 13:00 A |  | 100% |  |  | Analista | 4h | 4h | 6.36 | 6.36 |
| 82 | 1.1.4.4 | **Gestion de Comunicación** |  | 8h | 2015-06-30 09:00 A | 2015-06-30 17:00 A | 80 | 100% |  |  | Administrador | 16h | 16h | 13.62 | 13.62 |
| 83 | 1.1.4.4.1 | Gestionar comunicaciones del proyecto | manual | 8h | 2015-06-30 09:00 A | 2015-06-30 17:00 A |  | 100% |  |  | Equipo de Computo | 8h | 8h | 0.9 | 0.9 |
| 84 | 1.1.4.5 | **Gestion de Interesados** |  | 2d | 2015-07-01 09:00 A | 2015-07-02 17:00 A | 82 | 100% |  |  | Equipo de Computo; Equipo de Oficina [50%] | 32h | 32h | 1.2 | 1.2 |
| 85 | 1.1.4.5.1 | Gestionar participacion de los interesados |  | 16h | 2015-07-01 09:00 A | 2015-07-02 17:00 A |  | 100% |  |  | Equipo de Oficina [50%] | 8h | 8h | 0.15 | 0.15 |
| 86 | 1.1.4.6 | Fin fase | milestone | 0d | 2015-07-02 17:00 | 2015-07-02 17:00 | 85 |  |  | 0d | Equipo de Computo |  |  | 0.9 |  |
| 87 | 1.1.5 | **SEGUIMIENTO Y CONTROL** |  | 27d | 2015-07-02 09:00 A | 2015-08-01 11:00 | 74 | 95% | 1.29d |  | Administrador | 766.2h | 738.17h | 1,031.91 | 1,000.6 |
| 88 | 1.1.5.1 | **Gestion de Integracion** |  | 16d | 2015-07-02 09:00 A | 2015-07-20 17:00 |  | 93% | 1.07d |  |  | 12h | 11.2h | 19.08 | 17.81 |
| 89 | 1.1.5.1.1 | Monitorear y Controlar el trabajo del proyecto | manual | 4h | 2015-07-02 09:00 A | 2015-07-02 13:00 |  | 90% | 0.4h |  | Administrador | 4h | 3.6h | 6.36 | 5.72 |
| 90 | 1.1.5.1.2 | Aceptacion de cambios |  | 8h | 2015-07-03 09:00 A | 2015-07-03 23:00 | 89 | 95% | 0.4h | 13.38d | Administrador | 8h | 7.6h | 12.72 | 12.08 |
| 91 | 1.1.5.2 | **Gestion del Alcance** |  | 17h | 2015-07-04 09:00 A | 2015-07-07 16:00 | 88 | 99% | 0.2h |  | Analista | 34.2h | 34h | 54.38 | 54.06 |
| 92 | 1.1.5.2.1 | Validar Alcance | manual | 8h | 2015-07-04 09:00 A | 2015-07-06 15:00 |  | 98% | 0.2h |  | Administrador | 8.2h | 8h | 13.04 | 12.72 |
| 93 | 1.1.5.2.2 | Controlar Alcance | manual | 9h | 2015-07-06 14:00 A | 2015-07-07 15:00 A | 92 | 100% |  |  | Administrador | 9h | 9h | 14.31 | 14.31 |
| 94 | 1.1.5.3 | **Gestion del Tiempo** |  | 2d | 2015-07-08 09:00 A | 2015-07-09 17:00 A | 91 | 100% |  |  | Administrador | 32h | 32h | 50.88 | 50.88 |
| 95 | 1.1.5.3.1 | Controlar Cronograma | manual | 2d | 2015-07-08 09:00 A | 2015-07-09 17:00 A |  | 100% |  |  | Programador 2 | 16h | 16h | 25.44 | 25.44 |
| 96 | 1.1.5.4 | **Gestion de Costos** |  | 2d | 2015-07-10 09:00 A | 2015-07-11 11:00 | 94 | 50% | 1d |  | Administrador | 40h | 32h | 26.74 | 26.74 |
| 97 | 1.1.5.4.1 | Controlar Costos | manual | 2d | 2015-07-10 09:00 A | 2015-07-11 11:00 |  | 50% | 1d |  | Equipo de Computo; Equipo de Oficina [50%]; Impresiones [50%] | 24h | 16h | 1.3 | 1.3 |
| 98 | 1.1.5.5 | **Gestion de Calidad** |  | 2d | 2015-07-13 09:00 A | 2015-07-14 17:00 A | 96 | 100% |  |  | Programador 1 | 32h | 32h | 50.88 | 50.88 |
| 99 | 1.1.5.5.1 | Controlar calidad | manual | 2d | 2015-07-13 09:00 A | 2015-07-14 17:00 A |  | 100% |  |  | Administrador | 16h | 16h | 25.44 | 25.44 |
| 100 | 1.1.5.6 | **Gestion de Comunicaciones** |  | 2d | 2015-07-15 09:00 A | 2015-07-16 17:00 A | 98 | 100% |  |  | Analista | 32h | 32h | 50.88 | 50.88 |
| 101 | 1.1.5.6.1 | Controlar comunicación | manual | 2d | 2015-07-15 09:00 A | 2015-07-16 17:00 A |  | 100% |  |  | Administrador | 16h | 16h | 25.44 | 25.44 |
| 102 | 1.1.5.7 | **Gestion de Riesgos** |  | 2d | 2015-07-17 09:00 A | 2015-07-18 11:00 A | 100 | 100% |  |  | Programador 1 | 32h | 32h | 50.88 | 50.88 |
| 103 | 1.1.5.7.1 | Controlar Riesgos | manual | 2d | 2015-07-17 09:00 A | 2015-07-18 11:00 A |  | 100% |  |  | Analista | 16h | 16h | 25.44 | 25.44 |

| ID | WBS | Task | Type | Duration | Start | Finish | Predecessors | Complete | Remaining | Total slack | Resources | Work | Actual work | Cost | Actual cost |
| --- | --- | --- | --- | --- | --- | --- | --- | --- | --- | --- | --- | --- | --- | --- | --- |
| 104 | 1.1.5.8 | **Gestion de Interesados** |  | 2d | 2015-07-20 09:00 A | 2015-07-21 17:00 A | 102 | 100% |  |  | Administrador; Analista; Programador 1; Programador 2 | 80h | 80h | 127.2 | 127.2 |
| 105 | 1.1.5.8.1 | Controlar Participacion de Interesados | manual | 2d | 2015-07-20 09:00 A | 2015-07-21 17:00 A |  | 100% |  |  | Administrador | 16h | 16h | 25.44 | 25.44 |
| 106 | 1.1.5.9 | **Metodologia UWE** |  | 10d | 2015-07-21 17:00 A | 2015-08-01 11:00 | 104 | 99% | 0d |  | Programador 2; Equipo de Oficina [50%]; Programador 1 | 256h | 251h | 256.5 | 250.14 |
| 107 | 1.1.5.9.1 | Interfaces Abstractas | manual | 2d | 2015-07-21 17:00 A | 2015-07-23 17:00 A |  | 100% |  |  | Equipo de Oficina [50%] | 8h | 8h | 0.15 | 0.15 |
| 108 | 1.1.5.9.2 | Definir StoryBoard | manual | 2d | 2015-07-25 09:00 A | 2015-07-28 15:00 A | 107 | 100% |  |  | Equipo de Computo | 16h | 16h | 0.9 | 0.9 |
| 109 | 1.1.5.9.3 | Prototipos de Interfaces |  | 4d | 2015-07-28 15:00 A | 2015-08-01 09:00 A | 108 | 100% |  |  | Equipo de Computo | 32h | 32h | 0.9 | 0.9 |
| 110 | 1.1.5.10 | Fin Fase | milestone | 0d | 2015-08-01 09:00 | 2015-08-01 09:00 | 109 |  |  | 0.25d | Equipo de Computo; Equipo de Oficina [50%] |  |  | 1.05 |  |
| 111 | 1.1.6 | **CIERRE** |  | 19d | 2015-08-05 09:00 A | 2015-08-26 17:00 | 87 | 99% | 0d |  | Administrador; Analista | 676h | 664.96h | 833.45 | 814.99 |
| 112 | 1.1.6.1 | **Gestion de Integracion** |  | 4d | 2015-08-05 09:00 A | 2015-08-08 11:00 A |  | 100% |  |  | Administrador | 72h | 72h | 90.34 | 90.34 |
| 113 | 1.1.6.1.1 | Transferencia de producto |  | 3d | 2015-08-05 09:00 A | 2015-08-07 23:00 A |  | 100% |  |  | Administrador | 24h | 24h | 38.16 | 38.16 |
| 114 | 1.1.6.1.2 | Actualizaciones de documentos | manual | 1d | 2015-08-07 17:00 A | 2015-08-08 11:00 A | 113 | 100% |  |  | Equipo de Computo; Equipo de Oficina [50%]; Impresiones [50%] | 16h | 16h | 1.3 | 1.3 |
| 115 | 1.1.6.2 | **Gestion de Adquisiciones** |  | 8d | 2015-08-10 17:00 A | 2015-08-19 17:00 A | 112 | 100% |  |  | Administrador | 132h | 132h | 104.11 | 104.11 |
| 116 | 1.1.6.2.1 | Adquisiciones cerradas | manual | 3d | 2015-08-10 17:00 A | 2015-08-13 17:00 A |  | 100% |  |  | Equipo de Computo; Equipo de Oficina [50%] | 36h | 36h | 1.05 | 1.05 |
| 117 | 1.1.6.2.2 | Actualizaciones de documentos | manual | 2d | 2015-08-15 11:00 A | 2015-08-18 17:00 A | 116 | 100% |  |  | Equipo de Computo; Equipo de Oficina [50%]; Impresiones [50%] | 32h | 32h | 1.3 | 1.3 |
| 118 | 1.1.6.3 | **Metodologia UWE** |  | 6d | 2015-08-19 17:00 A | 2015-08-26 17:00 A | 115 | 100% |  |  | Programador 2; Programador 1 | 168h | 168h | 154.74 | 154.74 |
| 119 | 1.1.6.3.1 | Prueba del Sistema | manual | 3d | 2015-08-19 17:00 A | 2015-08-22 11:00 A |  | 100% |  |  | Equipo de Computo; Equipo de Oficina [50%] | 36h | 36h | 1.05 | 1.05 |
| 120 | 1.1.6.3.2 | Plan de Instalacion | manual | 3d | 2015-08-22 11:00 A | 2015-08-26 17:00 A | 119 | 100% |  |  | Equipo de Computo; Equipo de Oficina [50%] | 36h | 36h | 1.05 | 1.05 |
| 121 | 1.1.6.4 | Fin fase | milestone, manual | 0d | 2015-08-26 17:00 | 2015-08-26 17:00 | 120 |  |  |  | Equipo de Computo |  |  | 0.9 |  |
| 122 | 2 | FIN | milestone | 0d | 2015-08-26 17:00 A | 2015-08-26 17:00 A | 121 | 100% |  |  | Equipo de Computo; Equipo de Oficina [50%]; Impresiones [50%] |  |  | 1.3 | 1.3 |
